# Карта города

Schedule from MS Project, 2026-03-02 to 2026-07-31, status date 2026-05-15, costs in ₽, A marks actual dates.
Длительность - 6 месяцев / Бюджет - 50.000 рублей / Состав - 16 человек
·Длительность - 6 месяцев/ ·Бюджет - 50.000 рублей/ ·Состав - 16 человек

## Calendars

- Стандартный: Mon-Fri 09:00-13:00, 14:00-18:00; Sat-Sun off. Exceptions (off unless hours are given): 2026-03-09 (8 марта), 2026-04-30 09:00-13:00, 14:00-17:00 (Сокращенный день), 2026-05-01 (Первые майские), 2026-05-08 09:00-13:00, 14:00-17:00 (Сокращенный день), 2026-05-11 (Вторые майские), 2026-06-11 09:00-13:00, 14:00-17:00 (Сокращенный день), 2026-06-12 (День России).

## Resources

| Resource | Group | Rate | Cost per use |
| --- | --- | --- | --- |
| Ведущий программист | Программирование | 10 | 100 |
| Программист №1 | Программирование | 7 | 50 |
| Программист №2 | Программирование | 7 | 50 |
| Программист №3 | Программирование | 7 | 50 |
| Программист №4 | Программирование | 7 | 50 |
| Системный аналитик | Анализ | 20 | 300 |
| Художник-дизайнер | Дизайн | 8 | 70 |
| Технический писатель | Документация | 5 | 20 |
| Web-дизайнер | Internet | 7 | 50 |
| 3D аниматор | Дизайн | 8 | 70 |
| Мультимедиа-корреспондент | М-Медиа | 3 | 20 |
| Наборщик данных №1 | Ввод данных | 2 | 10 |
| Наборщик данных №2 | Ввод данных | 2 | 10 |
| Наборщик данных №3 | Ввод данных | 2 | 10 |
| Наборщик данных №4 | Ввод данных | 2 | 10 |
| Наборщик данных №5 | Ввод данных | 2 | 10 |
| Сервер | Оборудование | 2 |  |
| Специализированное ПО | ПО | 120 |  |
| Наборщик данных №6 | Ввод данных | 2 | 10 |
| Наборщик данных №7 | Ввод данных | 2 | 10 |
| Партнерские сервисные услоги |  | 3200 |  |
| Программист-стажер | Программирование | 5 | 20 |

## Schedule

| ID | WBS | Task | Type | Duration | Start | Finish | Predecessors | Complete | Remaining | Baseline start | Baseline finish | Baseline duration | Total slack | Free slack | Resources | Work | Actual work | Cost | Baseline cost | Actual cost |
| --- | --- | --- | --- | --- | --- | --- | --- | --- | --- | --- | --- | --- | --- | --- | --- | --- | --- | --- | --- | --- |
| 1 | 1 | Начало проекта | milestone | 0d | 2026-03-02 09:00 A | 2026-03-02 09:00 A |  | 100% |  | 2026-03-02 09:00 | 2026-03-02 09:00 | 0d |  |  |  |  |  |  |  |  |
| 2 | 2 | **Создание интерфейса** |  | 85.01d | 2026-03-02 09:00 A | 2026-07-03 12:04 | 1 | 88% | 10.2d | 2026-03-02 09:00 | 2026-06-29 17:23 | 81.55d | 0d |  |  | 592h | 352h | 6,094 | 5,650 | 4,170 |
| 3 | 2.1 | **Разработка дизайна интерфейса** |  | 28.75d | 2026-03-02 09:00 A | 2026-04-10 16:00 A |  | 100% |  | 2026-03-02 09:00 | 2026-04-07 15:00 | 25.62d |  |  |  | 352h | 352h | 3,290 | 2,770 | 3,290 |
| 4 | 2.1.1 | Разработка 2D графических элементов |  | 3.3w | 2026-03-02 09:00 A | 2026-03-26 11:00 A |  | 100% |  | 2026-03-02 09:00 | 2026-03-24 12:00 | 3w |  |  | Художник-дизайнер; Специализированное ПО [0.6%] | 132h | 132h | 1,225 | 1,030 | 1,225 |
| 5 | 2.1.2 | Разработка 3D графических элементов |  | 2.2w | 2026-03-02 09:00 A | 2026-03-18 13:00 A | 4SS | 100% |  | 2026-03-02 09:00 | 2026-03-17 11:00 | 2w |  |  | 3D аниматор; Специализированное ПО [0.6%] | 88h | 88h | 840 | 710 | 840 |
| 6 | 2.1.3 | Создание заставки |  | 3.3w | 2026-03-18 14:00 A | 2026-04-10 16:00 A | 5 | 100% |  | 2026-03-17 11:00 | 2026-04-07 15:00 | 3w |  |  | 3D аниматор; Специализированное ПО [0.6%] | 132h | 132h | 1,225 | 1,030 | 1,225 |
| 7 | 2.2 | Программирование интерфейса |  | 1.2w | 2026-06-25 12:04 | 2026-07-03 12:04 | 3, 12 |  |  | 2026-06-18 12:23 | 2026-06-29 17:23 | 1.5w | 0d |  | Программист №3; Программист №4; Программист №1; Программист №2; Программист-стажер | 240h |  | 1,804 | 1,880 |  |
| 8 | 3 | **Построение базы объектов** |  | 85d | 2026-03-30 09:00 A | 2026-07-30 12:00 |  | 39% | 51.79d | 2026-03-24 12:00 | 2026-07-17 18:00 | 80.25d | 0.85d |  | Сервер; Партнерские сервисные услоги | 5651h | 1775.06h | 13,034.8 | 15,112 | 6,294.95 |
| 9 | 3.1 | Анализ и построение структуры базы объектов |  | 2w | 2026-03-30 09:00 A | 2026-04-13 11:00 A |  | 100% |  | 2026-03-24 12:00 | 2026-04-07 15:00 | 2w |  |  | Системный аналитик | 80h | 80h | 1,900 | 1,900 | 1,900 |
| 10 | 3.2 | Программирование средств обработки базы объектов |  | 3.15w | 2026-04-13 11:00 A | 2026-05-05 10:00 A | 9 | 100% |  | 2026-04-07 15:00 | 2026-04-21 15:00 | 2w |  |  | Программист №3; Программист №4; Программист №2; Программист-стажер [50%] | 240h | 240h | 1,988.8 | 1,830 | 1,988.8 |
| 11 | 3.3 | Наполнение базы объектов |  | 12w | 2026-05-05 10:00 A | 2026-07-30 12:00 | 10 | 13% | 10.45w | 2026-04-21 15:00 | 2026-07-17 18:00 | 12w | 0.85d |  | Наборщик данных №1; Наборщик данных №2; Наборщик данных №3; Наборщик данных №4; Наборщик данных №5 | 2400h | 310h | 4,850 | 4,850 | 670 |
| 12 | 4 | **Создание ядра GIS** |  | 79.01d | 2026-03-02 09:00 A | 2026-06-25 12:04 |  | 65% | 27.48d | 2026-03-02 09:00 | 2026-06-18 12:23 | 74.05d | 0d |  |  | 1835.3h | 678h | 17,956.18 | 18,342.18 | 8,914.02 |
| 13 | 4.1 | Анализ и проектирование ядра |  | 3.73w | 2026-03-02 09:00 A | 2026-03-27 18:00 A |  | 100% |  | 2026-03-02 09:00 | 2026-03-24 12:00 | 3w |  |  | Ведущий программист; Системный аналитик | 296h | 296h | 4,840 | 4,000 | 4,840 |
| 14 | 4.2 | Создание модели ядра |  | 6.72w | 2026-03-30 09:00 A | 2026-05-19 10:00 | 13 | 97% | 0.23w | 2026-03-24 12:00 | 2026-04-29 09:00 | 5.13w | 0d |  | Ведущий программист; Программист №1; Программист-стажер | 400h | 382h | 3,552.02 | 3,550.01 | 3,424.02 |
| 15 | 4.3 | Тестирование модели ядра |  | 0.62w | 2026-05-19 10:00 | 2026-05-22 11:00 | 14 |  |  | 2026-04-29 09:00 | 2026-05-04 15:00 | 0.5w | 0d |  | Программист №1; Программист №2 | 50h |  | 450 | 380 |  |
| 16 | 4.4 | Создание рабочей версии ядра |  | 4.6w | 2026-05-22 11:00 | 2026-06-25 12:04 | 15 |  |  | 2026-05-04 15:00 | 2026-06-18 12:23 | 6.11w | 0d |  | Ведущий программист; Программист №1; Программист №2; Программист №3; Программист №4; Программист-стажер | 1089.29h |  | 8,114.16 | 9,412.16 |  |
| 17 | 5 | Создание мультимедиа - наполнения |  | 6w | 2026-04-10 16:00 A | 2026-05-27 16:00 | 3 | 75% | 1.52w | 2026-04-07 15:00 | 2026-05-22 16:00 | 6w | 45.35d |  | Мультимедиа-корреспондент | 240h | 179h | 847.1 | 740 | 636.65 |
| 18 | 6 | Создание справочной системы |  | 2w | 2026-07-14 16:04 | 2026-07-29 09:04 | 7 |  |  | 2026-07-09 11:23 | 2026-07-23 14:23 | 2w | 2.22d |  | Технический писатель | 80h |  | 420 | 420 |  |
| 19 | 7 | **Создание руководства пользователя** |  | 17.38d | 2026-06-19 12:04 | 2026-07-14 16:04 | 7FS-10d |  |  | 2026-06-15 17:23 | 2026-07-09 11:23 | 17.38d | 0d |  |  | 160h |  | 1,010 | 1,010 |  |
| 20 | 7.1 | Разработка дизайна руководства |  | 1w | 2026-06-19 12:04 | 2026-06-26 14:04 |  |  |  | 2026-06-15 17:23 | 2026-06-23 09:23 | 1w | 0d |  | Художник-дизайнер | 40h |  | 390 | 390 |  |
| 21 | 7.2 | Написание руководства пользователя |  | 3w | 2026-06-23 12:04 | 2026-07-14 16:04 | 20SS+2d |  |  | 2026-06-17 17:23 | 2026-07-09 11:23 | 3w | 0d |  | Технический писатель | 120h |  | 620 | 620 |  |
| 22 | 8 | **Создание web - сайта и поддержка** |  | 23.62d | 2026-06-23 12:04 | 2026-07-27 09:04 |  |  |  | 2026-06-17 17:23 | 2026-07-21 14:23 | 23.62d | 0d |  |  | 246.79h |  | 2,097.52 | 2,106 |  |
| 23 | 8.1 | Разработка структуры сайта |  | 1d | 2026-06-23 12:04 | 2026-06-24 12:04 | 21SS |  |  | 2026-06-17 17:23 | 2026-06-18 17:23 | 1d | 0d |  | Web-дизайнер | 7h |  | 99.01 | 106 |  |
| 24 | 8.2 | Разработка дизайна сайта |  | 1.45w | 2026-06-24 12:04 | 2026-07-03 15:04 | 23 |  |  | 2026-06-18 17:23 | 2026-06-30 10:23 | 1.43w | 0d |  | 3D аниматор; Web-дизайнер; Художник-дизайнер | 119.79h |  | 1,108.51 | 1,110 |  |
| 25 | 8.3 | Наполнение сайта |  | 3w | 2026-07-03 15:04 | 2026-07-27 09:04 | 24 |  |  | 2026-06-30 10:23 | 2026-07-21 14:23 | 3w | 0d |  | Web-дизайнер | 120h |  | 890 | 890 |  |
| 26 | 9 | Тестирование сайта |  | 1.84w | 2026-07-20 09:04 | 2026-07-31 10:48 | 22FS-1w |  |  | 2026-07-14 14:23 | 2026-07-30 16:26 | 2.45w | 0d |  | Ведущий программист; Программист №1; Программист №2; Программист №3; Программист №4; Программист-стажер | 435.78h |  | 3,438.58 | 3,945.15 |  |
| 27 | 10 | Сдача сайта в эксплуатацию | milestone | 0d | 2026-07-31 10:48 | 2026-07-31 10:48 | 26 |  |  | 2026-07-30 16:26 | 2026-07-30 16:26 | 0d | 0d | 1.8d |  |  |  |  |  |  |

| ID | WBS | Task | Duration | Start | Finish | Complete | Remaining | Baseline start | Baseline finish | Baseline duration | Total slack | Free slack | Constraint | Resources | Work | Actual work | Cost | Baseline cost | Actual cost |
| --- | --- | --- | --- | --- | --- | --- | --- | --- | --- | --- | --- | --- | --- | --- | --- | --- | --- | --- | --- |
| 28 | 11 | **Совещание** | 100.75d | 2026-03-04 09:00 A | 2026-07-29 10:00 | 50% | 50.38d | 2026-03-04 09:00 | 2026-07-29 10:00 | 100.75d | 2.1d | 1.25d |  |  | 154h | 77h | 1,342 | 1,342 | 671 |
| 29 | 11.1 | Совещание 1 | 1h | 2026-03-04 09:00 A | 2026-03-04 10:00 A | 100% |  | 2026-03-04 09:00 | 2026-03-04 10:00 | 1h |  |  | start no earlier than 2026-03-04 09:00 | Web-дизайнер; Ведущий программист; Мультимедиа-корреспондент; Системный аналитик; Технический писатель; Художник-дизайнер; 3D аниматор | 7h | 7h | 61 | 61 | 61 |
| 30 | 11.2 | Совещание 2 | 1h | 2026-03-11 09:00 A | 2026-03-11 10:00 A | 100% |  | 2026-03-11 09:00 | 2026-03-11 10:00 | 1h |  |  | start no earlier than 2026-03-11 09:00 | 3D аниматор; Web-дизайнер; Ведущий программист; Мультимедиа-корреспондент; Системный аналитик; Технический писатель; Художник-дизайнер | 7h | 7h | 61 | 61 | 61 |
| 31 | 11.3 | Совещание 3 | 1h | 2026-03-18 09:00 A | 2026-03-18 10:00 A | 100% |  | 2026-03-18 09:00 | 2026-03-18 10:00 | 1h |  |  | start no earlier than 2026-03-18 09:00 | 3D аниматор; Web-дизайнер; Ведущий программист; Мультимедиа-корреспондент; Системный аналитик; Технический писатель; Художник-дизайнер | 7h | 7h | 61 | 61 | 61 |
| 32 | 11.4 | Совещание 4 | 1h | 2026-03-25 09:00 A | 2026-03-25 10:00 A | 100% |  | 2026-03-25 09:00 | 2026-03-25 10:00 | 1h |  |  | start no earlier than 2026-03-25 09:00 | 3D аниматор; Web-дизайнер; Ведущий программист; Мультимедиа-корреспондент; Системный аналитик; Технический писатель; Художник-дизайнер | 7h | 7h | 61 | 61 | 61 |
| 33 | 11.5 | Совещание 5 | 1h | 2026-04-01 09:00 A | 2026-04-01 10:00 A | 100% |  | 2026-04-01 09:00 | 2026-04-01 10:00 | 1h |  |  | start no earlier than 2026-04-01 09:00 | 3D аниматор; Web-дизайнер; Ведущий программист; Мультимедиа-корреспондент; Системный аналитик; Технический писатель; Художник-дизайнер | 7h | 7h | 61 | 61 | 61 |
| 34 | 11.6 | Совещание 6 | 1h | 2026-04-08 09:00 A | 2026-04-08 10:00 A | 100% |  | 2026-04-08 09:00 | 2026-04-08 10:00 | 1h |  |  | start no earlier than 2026-04-08 09:00 | 3D аниматор; Web-дизайнер; Ведущий программист; Мультимедиа-корреспондент; Системный аналитик; Технический писатель; Художник-дизайнер | 7h | 7h | 61 | 61 | 61 |
| 35 | 11.7 | Совещание 7 | 1h | 2026-04-15 09:00 A | 2026-04-15 10:00 A | 100% |  | 2026-04-15 09:00 | 2026-04-15 10:00 | 1h |  |  | start no earlier than 2026-04-15 09:00 | 3D аниматор; Web-дизайнер; Ведущий программист; Мультимедиа-корреспондент; Системный аналитик; Технический писатель; Художник-дизайнер | 7h | 7h | 61 | 61 | 61 |
| 36 | 11.8 | Совещание 8 | 1h | 2026-04-22 09:00 A | 2026-04-22 10:00 A | 100% |  | 2026-04-22 09:00 | 2026-04-22 10:00 | 1h |  |  | start no earlier than 2026-04-22 09:00 | 3D аниматор; Web-дизайнер; Ведущий программист; Мультимедиа-корреспондент; Системный аналитик; Технический писатель; Художник-дизайнер | 7h | 7h | 61 | 61 | 61 |
| 37 | 11.9 | Совещание 9 | 1h | 2026-04-29 09:00 A | 2026-04-29 10:00 A | 100% |  | 2026-04-29 09:00 | 2026-04-29 10:00 | 1h |  |  | start no earlier than 2026-04-29 09:00 | 3D аниматор; Web-дизайнер; Ведущий программист; Мультимедиа-корреспондент; Системный аналитик; Технический писатель; Художник-дизайнер | 7h | 7h | 61 | 61 | 61 |
| 38 | 11.10 | Совещание 10 | 1h | 2026-05-06 09:00 A | 2026-05-06 10:00 A | 100% |  | 2026-05-06 09:00 | 2026-05-06 10:00 | 1h |  |  | start no earlier than 2026-05-06 09:00 | 3D аниматор; Web-дизайнер; Ведущий программист; Мультимедиа-корреспондент; Системный аналитик; Технический писатель; Художник-дизайнер | 7h | 7h | 61 | 61 | 61 |
| 39 | 11.11 | Совещание 11 | 1h | 2026-05-13 09:00 A | 2026-05-13 10:00 A | 100% |  | 2026-05-13 09:00 | 2026-05-13 10:00 | 1h |  |  | start no earlier than 2026-05-13 09:00 | 3D аниматор; Web-дизайнер; Ведущий программист; Мультимедиа-корреспондент; Системный аналитик; Технический писатель; Художник-дизайнер | 7h | 7h | 61 | 61 | 61 |
| 40 | 11.12 | Совещание 12 | 1h | 2026-05-20 09:00 | 2026-05-20 10:00 |  |  | 2026-05-20 09:00 | 2026-05-20 10:00 | 1h | 50.98d | 50.12d | start no earlier than 2026-05-20 09:00 | 3D аниматор; Web-дизайнер; Ведущий программист; Мультимедиа-корреспондент; Системный аналитик; Технический писатель; Художник-дизайнер | 7h |  | 61 | 61 |  |
| 41 | 11.13 | Совещание 13 | 1h | 2026-05-27 09:00 | 2026-05-27 10:00 |  |  | 2026-05-27 09:00 | 2026-05-27 10:00 | 1h | 45.98d | 45.12d | start no earlier than 2026-05-27 09:00 | 3D аниматор; Web-дизайнер; Ведущий программист; Мультимедиа-корреспондент; Системный аналитик; Технический писатель; Художник-дизайнер | 7h |  | 61 | 61 |  |
| 42 | 11.14 | Совещание 14 | 1h | 2026-06-03 09:00 | 2026-06-03 10:00 |  |  | 2026-06-03 09:00 | 2026-06-03 10:00 | 1h | 40.98d | 40.12d | start no earlier than 2026-06-03 09:00 | 3D аниматор; Web-дизайнер; Ведущий программист; Мультимедиа-корреспондент; Системный аналитик; Технический писатель; Художник-дизайнер | 7h |  | 61 | 61 |  |
| 43 | 11.15 | Совещание 15 | 1h | 2026-06-10 09:00 | 2026-06-10 10:00 |  |  | 2026-06-10 09:00 | 2026-06-10 10:00 | 1h | 35.98d | 35.12d | start no earlier than 2026-06-10 09:00 | 3D аниматор; Web-дизайнер; Ведущий программист; Мультимедиа-корреспондент; Системный аналитик; Технический писатель; Художник-дизайнер | 7h |  | 61 | 61 |  |
| 44 | 11.16 | Совещание 16 | 1h | 2026-06-17 09:00 | 2026-06-17 10:00 |  |  | 2026-06-17 09:00 | 2026-06-17 10:00 | 1h | 32.1d | 31.25d | start no earlier than 2026-06-17 09:00 | 3D аниматор; Web-дизайнер; Ведущий программист; Мультимедиа-корреспондент; Системный аналитик; Технический писатель; Художник-дизайнер | 7h |  | 61 | 61 |  |
| 45 | 11.17 | Совещание 17 | 1h | 2026-06-24 09:00 | 2026-06-24 10:00 |  |  | 2026-06-24 09:00 | 2026-06-24 10:00 | 1h | 27.1d | 26.25d | start no earlier than 2026-06-24 09:00 | 3D аниматор; Web-дизайнер; Ведущий программист; Мультимедиа-корреспондент; Системный аналитик; Технический писатель; Художник-дизайнер | 7h |  | 61 | 61 |  |
| 46 | 11.18 | Совещание 18 | 1h | 2026-07-01 09:00 | 2026-07-01 10:00 |  |  | 2026-07-01 09:00 | 2026-07-01 10:00 | 1h | 22.1d | 21.25d | start no earlier than 2026-07-01 09:00 | 3D аниматор; Web-дизайнер; Ведущий программист; Мультимедиа-корреспондент; Системный аналитик; Технический писатель; Художник-дизайнер | 7h |  | 61 | 61 |  |
| 47 | 11.19 | Совещание 19 | 1h | 2026-07-08 09:00 | 2026-07-08 10:00 |  |  | 2026-07-08 09:00 | 2026-07-08 10:00 | 1h | 17.1d | 16.25d | start no earlier than 2026-07-08 09:00 | 3D аниматор; Web-дизайнер; Ведущий программист; Мультимедиа-корреспондент; Системный аналитик; Технический писатель; Художник-дизайнер | 7h |  | 61 | 61 |  |
| 48 | 11.20 | Совещание 20 | 1h | 2026-07-15 09:00 | 2026-07-15 10:00 |  |  | 2026-07-15 09:00 | 2026-07-15 10:00 | 1h | 12.1d | 11.25d | start no earlier than 2026-07-15 09:00 | 3D аниматор; Web-дизайнер; Ведущий программист; Мультимедиа-корреспондент; Системный аналитик; Технический писатель; Художник-дизайнер | 7h |  | 61 | 61 |  |
| 49 | 11.21 | Совещание 21 | 1h | 2026-07-22 09:00 | 2026-07-22 10:00 |  |  | 2026-07-22 09:00 | 2026-07-22 10:00 | 1h | 7.1d | 6.25d | start no earlier than 2026-07-22 09:00 | 3D аниматор; Web-дизайнер; Ведущий программист; Мультимедиа-корреспондент; Системный аналитик; Технический писатель; Художник-дизайнер | 7h |  | 61 | 61 |  |
| 50 | 11.22 | Совещание 22 | 1h | 2026-07-29 09:00 | 2026-07-29 10:00 |  |  | 2026-07-29 09:00 | 2026-07-29 10:00 | 1h | 2.1d | 1.25d | start no earlier than 2026-07-29 09:00 | 3D аниматор; Web-дизайнер; Ведущий программист; Мультимедиа-корреспондент; Системный аналитик; Технический писатель; Художник-дизайнер | 7h |  | 61 | 61 |  |
